# RoboTractor XMPP and REST Command and Control Server

Schedule from MS Project, 2014-02-10 to 2015-02-26, status date 2014-03-10, A marks actual dates.

## Calendars

- Standard: Mon-Fri 08:00-12:00, 13:00-17:00; Sat-Sun off.

## Resources

| Resource |
| --- |
| Jeremy Wright |
| Arun Balaji Buduru |
| David Lucero |

## Schedule

| ID | WBS | Task | Duration | Start | Finish | Predecessors | Complete | Remaining | Baseline start | Baseline finish | Baseline duration | Baseline 1 start | Baseline 1 finish | Total slack | Deadline | Resources | Work | Actual work |
| --- | --- | --- | --- | --- | --- | --- | --- | --- | --- | --- | --- | --- | --- | --- | --- | --- | --- | --- |
| 1 | 1 | **Administrativa** | 44d | 2014-02-10 A | 2014-04-10 |  | 99% | 0.08d | 2014-02-09 | 2014-03-31 | 36d | 2014-02-10 | 2014-04-02 | 7d |  |  | 712h | 710.32h |
| 2 | 1.1 | Interim Report | 4.2w | 2014-02-10 A | 2014-03-10 A |  | 100% |  | 2014-02-10 | 2014-02-14 | 1w | 2014-02-10 | 2014-02-14 |  | 2014-03-10 | Jeremy Wright; Arun Balaji Buduru; David Lucero | 424h | 424h |
| 3 | 1.2 | Final Project Report | 1.8w | 2014-03-26 A | 2014-04-07 A | 38FF | 100% |  | 2014-03-24 | 2014-03-28 | 1w | 2014-03-26 | 2014-04-01 |  | 2014-04-07 | Jeremy Wright; Arun Balaji Buduru; David Lucero | 136h | 136h |
| 4 | 1.3 | Project Demo | 7d | 2014-04-01 A | 2014-04-10 | 3 | 99% | 0.07d | 2014-03-28 | 2014-03-31 | 1d | 2014-04-01 | 2014-04-02 | 7d | 2014-04-21 | Jeremy Wright; Arun Balaji Buduru; David Lucero | 152h | 150.32h |
| 5 | 2 | **Implementation** | 274d | 2014-02-10 A | 2015-02-26 A |  | 100% |  | 2014-02-10 | 2014-03-24 | 31d | 2014-02-10 | 2014-03-26 |  |  |  | 12548h | 12548h |
| 6 | 2.1 | **Development Environment** | 270d | 2014-02-10 A | 2015-02-20 A |  | 100% |  | 2014-02-10 | 2014-02-21 | 10d | 2014-02-10 | 2014-02-21 |  |  |  | 2916h | 2916h |
| 7 | 2.1.1 | Fabic Deployment | 266d | 2014-02-14 A | 2015-02-20 A |  | 100% |  | 2014-02-14 | 2014-02-14 | 1d | 2014-02-14 | 2014-02-14 |  |  | Jeremy Wright | 2128h | 2128h |
| 8 | 2.1.2 | Django Project | 0.5d | 2014-02-19 A | 2014-02-19 A |  | 100% |  | 2014-02-19 | 2014-02-19 | 0.5d | 2014-02-19 | 2014-02-19 |  |  | Jeremy Wright | 4h | 4h |
| 9 | 2.1.3 | ejabberd Configuration | 29d | 2014-02-10 A | 2014-03-20 A |  | 100% |  | 2014-02-10 | 2014-02-11 | 2d | 2014-02-10 | 2014-02-11 |  |  | Jeremy Wright | 232h | 232h |
| 10 | 2.1.4 | Web Server Configuration | 2d | 2014-02-12 A | 2014-02-13 A |  | 100% |  | 2014-02-12 | 2014-02-13 | 2d | 2014-02-12 | 2014-02-13 |  |  | Jeremy Wright | 16h | 16h |
| 11 | 2.1.5 | TastyPie Plugin Configuration | 1d | 2014-02-17 A | 2014-02-17 A |  | 100% |  | 2014-02-17 | 2014-02-17 | 1d | 2014-02-17 | 2014-02-17 |  |  | Jeremy Wright | 8h | 8h |
| 12 | 2.1.6 | Python Virtual Environments | 1d | 2014-02-18 A | 2014-02-18 A |  | 100% |  | 2014-02-18 | 2014-02-18 | 1d | 2014-02-18 | 2014-02-18 |  |  | Jeremy Wright | 8h | 8h |
| 13 | 2.1.7 | Testing | 33.5d | 2014-02-19 A | 2014-04-07 A | 7, 8, 9, 10, 11, 12 | 100% |  | 2014-02-19 | 2014-02-21 | 2d | 2014-02-19 | 2014-02-21 |  |  | Jeremy Wright | 268h | 268h |
| 14 | 2.1.8 | Development Documentation | 31.5d | 2014-02-21 A | 2014-04-07 A | 13 | 100% |  | 2014-02-21 | 2014-02-21 | 0.5d | 2014-02-21 | 2014-02-21 |  |  | Jeremy Wright | 252h | 252h |
| 15 | 2.2 | **XMPP Implementation** | 31d | 2014-02-24 A | 2014-04-07 A | 6 | 100% |  | 2014-02-24 | 2014-03-20 | 19d | 2014-02-24 | 2014-03-26 |  |  |  | 528h | 528h |
| 16 | 2.2.1 | Client Login/Auth | 1d | 2014-03-14 A | 2014-03-14 A | 9 | 100% |  | 2014-03-14 | 2014-03-14 | 1d | 2014-03-14 | 2014-03-14 |  |  | David Lucero | 8h | 8h |
| 17 | 2.2.2 | **Tractor Demo Software** | 31d | 2014-02-24 A | 2014-04-07 A |  | 100% |  | 2014-02-24 | 2014-03-07 | 10d | 2014-02-24 | 2014-03-07 |  |  |  | 296h | 296h |
| 18 | 2.2.2.1 | Command Language Grammar | 3d | 2014-02-24 A | 2014-02-26 A |  | 100% |  | 2014-02-24 | 2014-02-26 | 3d | 2014-02-24 | 2014-02-26 |  |  | David Lucero | 24h | 24h |
| 19 | 2.2.2.2 | State Machine Design | 3d | 2014-02-27 A | 2014-03-03 A |  | 100% |  | 2014-02-27 | 2014-03-03 | 3d | 2014-02-27 | 2014-03-03 |  |  | David Lucero | 24h | 24h |
| 20 | 2.2.2.3 | XMPP Client | 8d | 2014-03-04 A | 2014-03-13 A |  | 100% |  | 2014-03-04 | 2014-03-05 | 2d | 2014-03-04 | 2014-03-05 |  |  | David Lucero | 64h | 64h |
| 21 | 2.2.2.4 | Testing | 23d | 2014-03-06 A | 2014-04-07 A | 18, 19, 20 | 100% |  | 2014-03-06 | 2014-03-07 | 2d | 2014-03-06 | 2014-03-07 |  |  | David Lucero | 184h | 184h |
| 22 | 2.2.3 | Debug Channel for Demo and Debug | 14d | 2014-03-17 A | 2014-04-03 A | 17 | 100% |  | 2014-03-17 | 2014-03-18 | 2d | 2014-03-17 | 2014-03-18 |  |  | Jeremy Wright | 112h | 112h |
| 23 | 2.2.4 | Testing | 14d | 2014-03-19 A | 2014-04-07 A | 22, 16, 17 | 100% |  | 2014-03-19 | 2014-03-26 | 6d | 2014-03-19 | 2014-03-26 |  |  | Arun Balaji Buduru | 112h | 112h |
| 24 | 2.3 | **Frontend UI** | 41d | 2014-02-10 A | 2014-04-07 A |  | 100% |  | 2014-02-10 | 2014-03-24 | 31d | 2014-02-10 | 2014-03-24 |  |  |  | 360h | 360h |
| 25 | 2.3.1 | Google Maps Rendering of Tractor Positions | 1w | 2014-02-10 A | 2014-02-14 A |  | 100% |  | 2014-02-10 | 2014-02-14 | 1w | 2014-02-10 | 2014-02-14 |  |  | Arun Balaji Buduru | 40h | 40h |
| 26 | 2.3.2 | Connect UI to REST Interface | 9d | 2014-03-10 A | 2014-03-20 A |  | 100% |  | 2014-03-10 | 2014-03-11 | 2d | 2014-03-10 | 2014-03-11 |  |  | Arun Balaji Buduru | 72h | 72h |
| 27 | 2.3.3 | Mechanism to input a path to send to the Tractor | 3.8w | 2014-02-24 A | 2014-03-20 A |  | 100% |  | 2014-02-24 | 2014-02-28 | 1w | 2014-02-24 | 2014-02-28 |  |  | Arun Balaji Buduru | 152h | 152h |
| 28 | 2.3.4 | Testing | 12d | 2014-03-21 A | 2014-04-07 A | 25, 26, 27 | 100% |  | 2014-03-21 | 2014-03-24 | 2d | 2014-03-21 | 2014-03-24 |  |  | Arun Balaji Buduru | 96h | 96h |

Notes:
- 17: Demo Software is the virtual tractor who will act on the commands sent via Jabber. / This software is "dumb" and will blindly follow the commands. If time permits we will investigate adding random "mistakes" to make the service more realistic.
- 22: Provide some mechanism to show that the tractor is receiving the commands and acting on them. This could be as simple as printing the commands to a log and long with the state of the tractor's state machine.

| ID | WBS | Task | Duration | Start | Finish | Predecessors | Complete | Baseline start | Baseline finish | Baseline duration | Baseline 1 start | Baseline 1 finish | Resources | Work | Actual work |
| --- | --- | --- | --- | --- | --- | --- | --- | --- | --- | --- | --- | --- | --- | --- | --- |
| 29 | 2.4 | **Server Backend** | 19d | 2014-03-12 A | 2014-04-07 A | 6 | 100% | 2014-03-12 | 2014-03-19 | 6d | 2014-03-12 | 2014-03-19 |  | 152h | 152h |
| 30 | 2.4.1 | XMPP to Django (Punjab) connection | 3d | 2014-03-12 A | 2014-03-14 A |  | 100% | 2014-03-12 | 2014-03-14 | 3d | 2014-03-12 | 2014-03-14 | Arun Balaji Buduru | 24h | 24h |
| 31 | 2.4.2 | System Models | 1d | 2014-03-17 A | 2014-03-17 A |  | 100% | 2014-03-17 | 2014-03-17 | 1d | 2014-03-17 | 2014-03-17 | Arun Balaji Buduru | 8h | 8h |
| 32 | 2.4.3 | Testing | 15d | 2014-03-18 A | 2014-04-07 A | 30, 31 | 100% | 2014-03-18 | 2014-03-19 | 2d | 2014-03-18 | 2014-03-19 | Arun Balaji Buduru | 120h | 120h |
| 33 | 2.5 | **REST Interface** | 264d | 2014-02-24 A | 2015-02-26 A | 6 | 100% | 2014-02-21 | 2014-03-21 | 20d | 2014-02-24 | 2014-03-21 |  | 8592h | 8592h |
| 34 | 2.5.1 | API Design | 264d | 2014-02-24 A | 2015-02-26 A |  | 100% | 2014-02-24 | 2014-02-26 | 3d | 2014-02-24 | 2014-02-26 | David Lucero; Jeremy Wright | 4200h | 4200h |
| 35 | 2.5.2 | Authentication Model | 250d | 2014-03-14 A | 2015-02-26 A |  | 100% | 2014-03-14 | 2014-03-18 | 3d | 2014-03-14 | 2014-03-18 | David Lucero; Jeremy Wright | 3976h | 3976h |
| 36 | 2.5.3 | Connection to Punjab Models | 3d | 2014-03-19 A | 2014-03-21 A |  | 100% | 2014-03-19 | 2014-03-21 | 3d | 2014-03-19 | 2014-03-21 | David Lucero; Jeremy Wright | 24h | 24h |
| 37 | 2.5.4 | Testing | 28d | 2014-02-27 A | 2014-04-07 A |  | 100% | 2014-02-27 | 2014-03-11 | 4d | 2014-02-27 | 2014-03-11 | David Lucero; Jeremy Wright | 392h | 392h |
| 38 | 3 | System Testing | 1.8w | 2014-03-26 A | 2014-04-07 A | 5FF | 100% | 2014-03-24 | 2014-03-28 | 1w | 2014-03-26 | 2014-04-01 | Arun Balaji Buduru; David Lucero; Jeremy Wright | 208h | 208h |
